Schedule from MS Project, 2017-05-02 to 2017-08-05, status date 2017-05-02, costs in $.
Microsoft

## Calendars

- Estándar: Mon-Fri 09:00-13:00, 15:00-19:00; Sat-Sun off.

## Resources

| Resource | Rate |
| --- | --- |
| FJRC | 144.75 |
| EGC | 74.09 |
| MBMR | 59.88 |

## Schedule

| ID | WBS | Task | Type | Duration | Start | Finish | Predecessors | Total slack | Free slack | Resources | Work | Cost |
| --- | --- | --- | --- | --- | --- | --- | --- | --- | --- | --- | --- | --- |
| 1 | 1 | **Plan preliminar** |  | 0.75d | 2017-05-02 09:00 | 2017-05-02 17:00 |  | 21.75d | 0d |  | 6h | 868.5 |
| 2 | 1.1 | Generar un WBS del producto inicial |  | 1h | 2017-05-02 09:00 | 2017-05-02 10:00 |  | 21.75d | 0d | FJRC | 1h | 144.75 |
| 3 | 1.2 | Generar project charter |  | 1h | 2017-05-02 10:00 | 2017-05-02 11:00 | 2 | 21.75d | 0d | FJRC | 1h | 144.75 |
| 4 | 1.3 | Plan de proyecto preliminar |  | 2h | 2017-05-02 11:00 | 2017-05-02 13:00 | 3 | 21.75d | 0d | FJRC | 2h | 289.5 |
| 5 | 1.4 | Generar matriz de responsabilidad |  | 2h | 2017-05-02 15:00 | 2017-05-02 17:00 | 4 | 21.75d |  | FJRC | 2h | 289.5 |
| 6 | 2 | **Cremeria La Canasta** |  | 46.62d? | 2017-05-02 17:00 | 2017-07-06 12:00 | 1 | 21.62d |  |  | 551h | 51,862.28 |
| 7 | 2.1 | Formacion del equipo de desarrollo |  | 8h | 2017-05-02 17:00 | 2017-05-03 17:00 |  | 110.38d |  | MBMR | 8h | 479.04 |
| 8 | 2.2 | **Especificacion de requerimientos** |  | 11.75d? | 2017-05-02 17:00 | 2017-05-18 13:00 |  | 21.75d |  |  | 196h | 19,884.36 |
| 9 | 2.2.1 | **Elicitación** |  | 4.25d | 2017-05-02 17:00 | 2017-05-08 19:00 |  | 21.75d | 0d |  | 88h | 8,398.64 |
| 10 | 2.2.1.1 | Generar lista de proveedores |  | 1h | 2017-05-02 17:00 | 2017-05-02 18:00 |  | 21.75d | 0d | FJRC; EGC | 2h | 218.84 |
| 11 | 2.2.1.2 | Evaluar proveeodres de requerimientos |  | 4h | 2017-05-02 18:00 | 2017-05-03 12:00 | 10 | 21.75d | 0d | FJRC; EGC | 12h | 875.36 |
| 12 | 2.2.1.3 | Definir la estrategia de recolección de requerimientos |  | 1h | 2017-05-03 12:00 | 2017-05-03 13:00 | 11 | 21.75d | 0d | FJRC; EGC | 2h | 218.84 |
| 13 | 2.2.1.4 | Planificar reuniones de elicitación de requerimientos |  | 4h | 2017-05-03 15:00 | 2017-05-03 19:00 | 12 | 21.75d | 0d | FJRC; EGC | 8h | 875.36 |
| 14 | 2.2.1.5 | Identificar procesos del sistema |  | 16h | 2017-05-04 09:00 | 2017-05-05 19:00 | 13 | 21.75d | 0d | FJRC; EGC; MBMR | 48h | 4,459.52 |
| 15 | 2.2.1.6 | Identificar requerimientos funcionales |  | 4h | 2017-05-08 09:00 | 2017-05-08 13:00 | 14 | 21.75d | 0d | EGC; FJRC | 8h | 875.36 |
| 16 | 2.2.1.7 | Identificar los requerimientos no funcionales |  | 4h | 2017-05-08 15:00 | 2017-05-08 19:00 | 15 | 21.75d |  | FJRC; EGC | 8h | 875.36 |
| 17 | 2.2.2 | **Especificación** |  | 3.25d | 2017-05-09 09:00 | 2017-05-12 11:00 | 9 | 21.75d | 0d |  | 52h | 5,689.84 |
| 18 | 2.2.2.1 | Describir los requerimientos |  | 2h | 2017-05-09 09:00 | 2017-05-09 11:00 |  | 21.75d | 0d | FJRC; EGC | 4h | 437.68 |
| 19 | 2.2.2.2 | Evaluar los requerimientos |  | 8h | 2017-05-09 11:00 | 2017-05-10 11:00 | 18 | 21.75d | 0d | FJRC; EGC | 16h | 1,750.72 |
| 20 | 2.2.2.3 | SRS |  | 16h | 2017-05-10 11:00 | 2017-05-12 11:00 | 19 | 21.75d |  | FJRC; EGC | 32h | 3,501.44 |
| 21 | 2.2.3 | **Gestion de requerimientos** |  | 4.25d? | 2017-05-12 11:00 | 2017-05-18 13:00 | 17 | 21.75d | 0d |  | 56h | 5,795.88 |
| 22 | 2.2.3.1 | Priorizar los requerimmientos |  | 8h | 2017-05-12 11:00 | 2017-05-15 11:00 |  | 21.75d | 0d | FJRC; EGC | 16h | 1,750.72 |
| 23 | 2.2.3.2 | Almacenar los requerimientos |  | 4h | 2017-05-15 11:00 | 2017-05-15 17:00 | 22 | 21.75d | 0d | FJRC; EGC | 12h | 875.36 |
| 24 | 2.2.3.3 | Asisgnar al grupo de desarrollo los requerimientos del software |  | 2h | 2017-05-15 17:00 | 2017-05-15 19:00 | 23 | 21.75d | 0d | FJRC; EGC; MBMR | 8h | 557.44 |
| 25 | 2.2.3.4 | Administrar los cambios en los requerimientos |  | 4h | 2017-05-16 09:00 | 2017-05-16 13:00 | 24 | 21.75d | 0d | EGC | 4h | 296.36 |
| 26 | 2.2.3.5 | Administrar la trazabilidad de los requerimientos |  | 8h | 2017-05-16 15:00 | 2017-05-17 13:00 | 25 | 21.75d | 0d | FJRC | 8h | 1,158 |
| 27 | 2.2.3.6 | Calificar v&v de requerimientos |  | 1d? | 2017-05-17 15:00 | 2017-05-18 13:00 | 26 | 21.75d |  | FJRC | 8h | 1,158 |
| 28 | 2.3 | Hito de especificación de requerimientos | milestone | 0d | 2017-05-02 17:00 | 2017-05-02 17:00 |  | 111.38d |  |  |  |  |

| ID | WBS | Task | Duration | Start | Finish | Predecessors | Total slack | Free slack | Resources | Work | Cost |
| --- | --- | --- | --- | --- | --- | --- | --- | --- | --- | --- | --- |
| 29 | 2.4 | **Planificación** | 10d | 2017-05-18 15:00 | 2017-06-01 13:00 | 21 | 21.75d | 0d |  | 140h | 13,093.56 |
| 30 | 2.4.1 | Definicion del ciclo de vida | 2h | 2017-05-18 15:00 | 2017-05-18 17:00 |  | 21.75d | 0d | FJRC; EGC | 6h | 437.68 |
| 31 | 2.4.2 | Politicas del proyecto | 4h | 2017-05-18 17:00 | 2017-05-19 11:00 | 30 | 21.75d | 0d | FJRC | 4h | 579 |
| 32 | 2.4.3 | Actualizar el plan del proyecto | 16h | 2017-05-19 11:00 | 2017-05-23 11:00 | 31 | 21.75d | 0d | FJRC; EGC | 48h | 3,501.44 |
| 33 | 2.4.4 | **Estimación** | 2d | 2017-05-23 11:00 | 2017-05-25 11:00 |  | 21.75d |  |  | 40h | 3,684.12 |
| 34 | 2.4.4.1 | Actualizar WBS/ calendario | 8h | 2017-05-23 11:00 | 2017-05-24 11:00 | 32 | 21.75d | 0d | FJRC; EGC | 16h | 1,750.72 |
| 35 | 2.4.4.2 | Diccionario del WBS | 4h | 2017-05-24 11:00 | 2017-05-24 17:00 | 34 | 21.75d | 0d | FJRC; MBMR | 12h | 818.52 |
| 36 | 2.4.4.3 | Costos | 4h | 2017-05-24 17:00 | 2017-05-25 11:00 | 35 | 21.75d | 0d | FJRC; EGC; MBMR | 12h | 1,114.88 |
| 37 | 2.4.5 | **Riesgos** | 1.75d | 2017-05-25 11:00 | 2017-05-26 19:00 |  | 21.75d |  |  | 14h | 838.32 |
| 38 | 2.4.5.1 | identificacion de riesgos | 8h | 2017-05-25 11:00 | 2017-05-26 11:00 | 36 | 21.75d | 0d | MBMR | 8h | 479.04 |
| 39 | 2.4.5.2 | Asignación de prioridades | 2h | 2017-05-26 11:00 | 2017-05-26 13:00 | 38 | 21.75d | 0d | MBMR | 2h | 119.76 |
| 40 | 2.4.5.3 | Plan de mitigación y contingencia | 4h | 2017-05-26 15:00 | 2017-05-26 19:00 | 39 | 21.75d | 0d | MBMR | 4h | 239.52 |
| 41 | 2.4.6 | **Aseguramiento de la calidad** | 3.5d | 2017-05-29 09:00 | 2017-06-01 13:00 |  | 21.75d |  |  | 28h | 4,053 |
| 42 | 2.4.6.1 | Plan de gestión de la configuración | 24h | 2017-05-29 09:00 | 2017-05-31 19:00 | 40 | 21.75d | 0d | FJRC | 24h | 3,474 |
| 43 | 2.4.6.2 | Junta de arranque de construcción | 4h | 2017-06-01 09:00 | 2017-06-01 13:00 | 42 | 21.75d |  | FJRC | 4h | 579 |
| 44 | 2.5 | **Diseño preliminar** | 5.5d | 2017-06-01 15:00 | 2017-06-08 19:00 | 29 | 21.75d | 0d |  | 50h | 3,553.2 |
| 45 | 2.5.1 | Definición de la arquitectura | 4h | 2017-06-01 15:00 | 2017-06-01 19:00 |  | 21.75d | 0d | FJRC; MBMR | 8h | 818.52 |
| 46 | 2.5.2 | **Diagramas UML** | 2.5d | 2017-06-02 09:00 | 2017-06-06 13:00 |  | 21.75d |  |  | 20h | 1,197.6 |
| 47 | 2.5.2.1 | Diagramas casos de uso | 4h | 2017-06-02 09:00 | 2017-06-02 13:00 | 45 | 21.75d | 0d | MBMR | 4h | 239.52 |
| 48 | 2.5.2.2 | Diagramas de secuancia | 4h | 2017-06-02 15:00 | 2017-06-02 19:00 | 47 | 21.75d | 0d | MBMR | 4h | 239.52 |
| 49 | 2.5.2.3 | Diagrama de clases | 4h | 2017-06-05 09:00 | 2017-06-05 13:00 | 48 | 21.75d | 0d | MBMR | 4h | 239.52 |
| 50 | 2.5.2.4 | Diagramas de componentes | 4h | 2017-06-05 15:00 | 2017-06-05 19:00 | 49 | 21.75d | 0d | MBMR | 4h | 239.52 |
| 51 | 2.5.2.5 | Diagrama de despliegue | 4h | 2017-06-06 09:00 | 2017-06-06 13:00 | 50 | 21.75d | 0d | MBMR | 4h | 239.52 |
| 52 | 2.5.3 | Mapa de navegacion | 2h | 2017-06-06 15:00 | 2017-06-06 17:00 | 51 | 21.75d | 0d | MBMR | 2h | 119.76 |
| 53 | 2.5.4 | Maquetación/bocetos | 4h | 2017-06-06 17:00 | 2017-06-07 11:00 | 52 | 21.75d | 0d | MBMR | 4h | 239.52 |

| ID | WBS | Task | Duration | Start | Finish | Predecessors | Total slack | Free slack | Resources | Work | Cost |
| --- | --- | --- | --- | --- | --- | --- | --- | --- | --- | --- | --- |
| 54 | 2.5.5 | **Base de datos** | 1.75d | 2017-06-07 11:00 | 2017-06-08 19:00 |  | 21.75d |  |  | 16h | 1,177.8 |
| 55 | 2.5.5.1 | Diagrama E-R | 4h | 2017-06-07 11:00 | 2017-06-07 17:00 | 53 | 21.75d | 0d | MBMR | 4h | 239.52 |
| 56 | 2.5.5.2 | Diagrama relacional | 4h | 2017-06-07 17:00 | 2017-06-08 11:00 | 55 | 21.75d | 0d | MBMR | 4h | 239.52 |
| 57 | 2.5.5.3 | Diccionario de datos | 2h | 2017-06-08 11:00 | 2017-06-08 13:00 | 56 | 21.75d | 0d | MBMR | 4h | 119.76 |
| 58 | 2.5.5.4 | Integración de v&v | 4h | 2017-06-08 15:00 | 2017-06-08 19:00 | 57 | 21.75d |  | FJRC | 4h | 579 |
| 59 | 2.6 | **Diseño detallado** | 1.5d | 2017-06-09 09:00 | 2017-06-12 13:00 | 44 | 21.75d | 0d |  | 12h | 1,397.52 |
| 60 | 2.6.1 | Refinamientos del diseño | 4h | 2017-06-09 09:00 | 2017-06-09 13:00 |  | 21.75d | 0d | MBMR | 4h | 239.52 |
| 61 | 2.6.2 | Pruebas untarias unidad | 8h | 2017-06-09 15:00 | 2017-06-12 13:00 | 60 | 21.75d |  | FJRC | 8h | 1,158 |
| 62 | 2.7 | **Codificación** | 5.88d | 2017-06-12 15:00 | 2017-06-20 12:00 | 59 | 21.75d | 0d |  | 47h | 5,375.45 |
| 63 | 2.7.1 | Codificación de la base de datos | 4h | 2017-06-12 15:00 | 2017-06-12 19:00 |  | 21.75d | 0d | FJRC | 4h | 579 |
| 64 | 2.7.2 | **Módulo de Inicio(index)** | 0.88d | 2017-06-13 09:00 | 2017-06-13 18:00 | 63 | 21.75d | 0d |  | 7h | 518.63 |
| 65 | 2.7.2.1 | Clases de inicio | 4h | 2017-06-13 09:00 | 2017-06-13 13:00 |  | 21.75d | 0d | EGC | 4h | 296.36 |
| 66 | 2.7.2.2 | Controlador | 1h | 2017-06-13 15:00 | 2017-06-13 16:00 | 65 | 21.75d | 0d | EGC | 1h | 74.09 |
| 67 | 2.7.2.3 | Vista/interfaz | 2h | 2017-06-13 16:00 | 2017-06-13 18:00 | 66 | 21.75d |  | EGC | 2h | 148.18 |
| 68 | 2.7.3 | **Módulo de Productos** | 1.5d | 2017-06-13 18:00 | 2017-06-15 12:00 | 64 | 21.75d | 0d |  | 12h | 1,737 |
| 69 | 2.7.3.1 | Clases de producto | 4h | 2017-06-13 18:00 | 2017-06-14 12:00 |  | 21.75d | 0d | FJRC | 4h | 579 |
| 70 | 2.7.3.2 | Controlador | 2h | 2017-06-14 12:00 | 2017-06-14 16:00 | 69 | 21.75d | 0d | FJRC | 2h | 289.5 |
| 71 | 2.7.3.3 | Vista/interfaz | 3h | 2017-06-14 16:00 | 2017-06-14 19:00 | 70 | 21.75d | 0d | FJRC | 3h | 434.25 |
| 72 | 2.7.3.4 | Reportes | 3h | 2017-06-15 09:00 | 2017-06-15 12:00 | 71 | 21.75d | 4.25d | FJRC | 3h | 434.25 |
| 73 | 2.7.4 | **Módulo de Nosotros** | 0.75d | 2017-06-15 12:00 | 2017-06-16 10:00 | 68 | 21.75d | 0d |  | 6h | 359.28 |
| 74 | 2.7.4.1 | Clases de nosotros | 3h | 2017-06-15 12:00 | 2017-06-15 17:00 |  | 21.75d | 0d | MBMR | 3h | 179.64 |
| 75 | 2.7.4.2 | Controlador | 1h | 2017-06-15 17:00 | 2017-06-15 18:00 | 74 | 21.75d | 0d | MBMR | 1h | 59.88 |
| 76 | 2.7.4.3 | Vista/interfaz | 2h | 2017-06-15 18:00 | 2017-06-16 10:00 | 75 | 21.75d |  | MBMR | 2h | 119.76 |
| 77 | 2.7.5 | **Módulo de Novedades** | 0.75d | 2017-06-16 10:00 | 2017-06-16 18:00 | 73 | 21.75d | 0d |  | 6h | 444.54 |
| 78 | 2.7.5.1 | Clases de novedades | 3h | 2017-06-16 10:00 | 2017-06-16 13:00 |  | 21.75d | 0d | EGC | 3h | 222.27 |
| 79 | 2.7.5.2 | Controlador | 1h | 2017-06-16 15:00 | 2017-06-16 16:00 | 78 | 21.75d | 0d | EGC | 1h | 74.09 |
| 80 | 2.7.5.3 | Vista/interfaz | 2h | 2017-06-16 16:00 | 2017-06-16 18:00 | 79 | 21.75d |  | EGC | 2h | 148.18 |

| ID | WBS | Task | Duration | Start | Finish | Predecessors | Total slack | Free slack | Resources | Work | Cost |
| --- | --- | --- | --- | --- | --- | --- | --- | --- | --- | --- | --- |
| 81 | 2.7.6 | **Módulo de FAQ** | 0.75d | 2017-06-16 18:00 | 2017-06-19 16:00 | 77 | 21.75d | 0d |  | 6h | 868.5 |
| 82 | 2.7.6.1 | Clases de FAQ | 3h | 2017-06-16 18:00 | 2017-06-19 11:00 |  | 21.75d | 0d | FJRC | 3h | 434.25 |
| 83 | 2.7.6.2 | Controlador | 1h | 2017-06-19 11:00 | 2017-06-19 12:00 | 82 | 21.75d | 0d | FJRC | 1h | 144.75 |
| 84 | 2.7.6.3 | Vista/interfaz | 2h | 2017-06-19 12:00 | 2017-06-19 16:00 | 83 | 21.75d |  | FJRC | 2h | 289.5 |
| 85 | 2.7.7 | **Módulo de Contacto** | 0.75d | 2017-06-19 16:00 | 2017-06-20 12:00 | 81 | 21.75d |  |  | 6h | 868.5 |
| 86 | 2.7.7.1 | Clases de contacto | 3h | 2017-06-19 16:00 | 2017-06-19 19:00 |  | 21.75d | 0d | FJRC | 3h | 434.25 |
| 87 | 2.7.7.2 | Controlador | 1h | 2017-06-20 09:00 | 2017-06-20 10:00 | 86 | 21.75d | 0d | FJRC | 1h | 144.75 |
| 88 | 2.7.7.3 | Vista/interfaz | 2h | 2017-06-20 10:00 | 2017-06-20 12:00 | 87 | 21.75d |  | FJRC | 2h | 289.5 |
| 89 | 2.8 | **Pruebas** | 7.25d | 2017-06-20 12:00 | 2017-06-29 16:00 | 62 | 21.62d | 0d |  | 58h | 4,297.22 |
| 90 | 2.8.1 | **Caja blanca** | 7.25d | 2017-06-20 12:00 | 2017-06-29 16:00 |  | 21.62d |  |  | 58h | 4,297.22 |
| 91 | 2.8.1.1 | **Módulo de Inicio(index)** | 1.25d | 2017-06-20 12:00 | 2017-06-21 16:00 |  | 21.62d | 0d |  | 10h | 740.9 |
| 92 | 2.8.1.1.1 | Pruebas unitarias | 6h | 2017-06-20 12:00 | 2017-06-21 10:00 |  | 21.62d | 0d | EGC | 6h | 444.54 |
| 93 | 2.8.1.1.2 | Pruebas de módulo | 4h | 2017-06-21 10:00 | 2017-06-21 16:00 | 92 | 21.62d |  | EGC | 4h | 296.36 |
| 94 | 2.8.1.2 | **Módulo de productos** | 1.5d | 2017-06-21 16:00 | 2017-06-23 10:00 | 91 | 21.62d | 0d |  | 12h | 889.08 |
| 95 | 2.8.1.2.1 | Pruebas unitarias | 8h | 2017-06-21 16:00 | 2017-06-22 16:00 | 72 | 21.62d | 0d | EGC | 8h | 592.72 |
| 96 | 2.8.1.2.2 | Pruebas de módulo | 4h | 2017-06-22 16:00 | 2017-06-23 10:00 | 95 | 21.62d |  | EGC | 4h | 296.36 |
| 97 | 2.8.1.3 | **Módulo de Nosotros** | 1d | 2017-06-23 10:00 | 2017-06-26 10:00 | 94 | 21.62d | 0d |  | 8h | 592.72 |
| 98 | 2.8.1.3.1 | Pruebas unitarias | 4h | 2017-06-23 10:00 | 2017-06-23 16:00 |  | 21.62d | 0d | EGC | 4h | 296.36 |
| 99 | 2.8.1.3.2 | Pruebas de módulo | 4h | 2017-06-23 16:00 | 2017-06-26 10:00 | 98 | 21.62d |  | EGC | 4h | 296.36 |
| 100 | 2.8.1.4 | **Módulo de Novedades** | 1.5d | 2017-06-26 10:00 | 2017-06-27 16:00 | 97 | 21.62d | 0d |  | 12h | 889.08 |
| 101 | 2.8.1.4.1 | Pruebas unitarias | 8h | 2017-06-26 10:00 | 2017-06-27 10:00 |  | 21.62d | 0d | EGC | 8h | 592.72 |
| 102 | 2.8.1.4.2 | Pruebas de módulo | 4h | 2017-06-27 10:00 | 2017-06-27 16:00 | 101 | 21.62d |  | EGC | 4h | 296.36 |
| 103 | 2.8.1.5 | **Módulo de FAQ** | 1d | 2017-06-27 16:00 | 2017-06-28 16:00 | 100 | 21.62d | 0d |  | 8h | 592.72 |
| 104 | 2.8.1.5.1 | Pruebas unitarias | 4h | 2017-06-27 16:00 | 2017-06-28 10:00 |  | 21.62d | 0d | EGC | 4h | 296.36 |
| 105 | 2.8.1.5.2 | Pruebas de módulo | 4h | 2017-06-28 10:00 | 2017-06-28 16:00 | 104 | 21.62d |  | EGC | 4h | 296.36 |

| ID | WBS | Task | Type | Duration | Start | Finish | Predecessors | Total slack | Free slack | Constraint | Resources | Work | Cost |
| --- | --- | --- | --- | --- | --- | --- | --- | --- | --- | --- | --- | --- | --- |
| 106 | 2.8.1.6 | **Módulo de Contacto** |  | 1d | 2017-06-28 16:00 | 2017-06-29 16:00 | 103 | 21.62d |  |  |  | 8h | 592.72 |
| 107 | 2.8.1.6.1 | Pruebas unitarias |  | 4h | 2017-06-28 16:00 | 2017-06-29 10:00 |  | 21.62d | 0d |  | EGC | 4h | 296.36 |
| 108 | 2.8.1.6.2 | Pruebas de módulo |  | 4h | 2017-06-29 10:00 | 2017-06-29 16:00 | 107 | 21.62d |  |  | EGC | 4h | 296.36 |
| 109 | 2.9 | **Integración** |  | 1d | 2017-06-29 16:00 | 2017-06-30 16:00 | 89 | 21.62d | 0d |  |  | 8h | 479.04 |
| 110 | 2.9.1 | Pruebas de integración |  | 8h | 2017-06-29 16:00 | 2017-06-30 16:00 |  | 21.62d |  |  | MBMR | 8h | 479.04 |
| 111 | 2.10 | **Implementación** |  | 1.75d | 2017-06-30 16:00 | 2017-07-04 12:00 | 109 | 21.62d | 0d |  |  | 16h | 1,580.98 |
| 112 | 2.10.1 | Lista de hosting |  | 4h | 2017-06-30 16:00 | 2017-07-03 10:00 |  | 21.62d | 0d |  | EGC | 4h | 296.36 |
| 113 | 2.10.2 | Evaluación del hosting |  | 2h | 2017-07-03 10:00 | 2017-07-03 12:00 | 112 | 21.62d | 0d |  | FJRC; MBMR | 4h | 409.26 |
| 114 | 2.10.3 | Montar el sitio en el hosting |  | 4h | 2017-07-03 12:00 | 2017-07-03 18:00 | 113 | 21.62d | 0d |  | FJRC | 4h | 579 |
| 115 | 2.10.4 | Pruebas de sistema |  | 4h | 2017-07-03 18:00 | 2017-07-04 12:00 | 114 | 21.62d |  |  | EGC | 4h | 296.36 |
| 116 | 2.11 | **Cierre de proyecto** |  | 2d | 2017-07-04 12:00 | 2017-07-06 12:00 | 111 | 21.62d |  |  |  | 16h | 1,721.91 |
| 117 | 2.11.1 | Carta de aceptación |  | 2h | 2017-07-04 12:00 | 2017-07-04 16:00 |  | 21.62d | 0d |  | FJRC | 2h | 289.5 |
| 118 | 2.11.2 | Acta de cierre de proyecto |  | 1h | 2017-07-04 16:00 | 2017-07-04 17:00 | 117 | 21.62d | 0d |  | MBMR | 1h | 59.88 |
| 119 | 2.11.3 | Evaluación de desempeño |  | 4h | 2017-07-04 17:00 | 2017-07-05 11:00 | 118 | 21.62d | 0d |  | MBMR | 4h | 239.52 |
| 120 | 2.11.4 | Junta de lecciones aprendidas |  | 4h | 2017-07-05 11:00 | 2017-07-05 17:00 | 119 | 21.62d | 0d |  | FJRC | 4h | 579 |
| 121 | 2.11.5 | Revisión de adherencias |  | 2h | 2017-07-05 17:00 | 2017-07-05 19:00 | 120 | 21.62d | 0d |  | FJRC | 2h | 289.5 |
| 122 | 2.11.6 | Liberación de recursos |  | 1h | 2017-07-06 09:00 | 2017-07-06 10:00 | 121 | 21.62d | 0d |  | FJRC | 1h | 144.75 |
| 123 | 2.11.7 | Informe final(cierre) |  | 2h | 2017-07-06 10:00 | 2017-07-06 12:00 | 122 | 21.62d |  |  | MBMR | 2h | 119.76 |
| 126 | 3 | **Revición** |  | 65d | 2017-05-06 09:00 | 2017-08-05 09:00 |  | 0d |  |  |  |  |  |
| 127 | 3.1 | Revición 1 | milestone, manual | 0d | 2017-05-06 09:00 | 2017-05-06 09:00 |  |  |  | start no earlier than 2017-05-06 09:00 |  |  |  |
| 128 | 3.2 | Revición 2 | milestone, manual | 0d | 2017-05-13 09:00 | 2017-05-13 09:00 |  |  |  | start no earlier than 2017-05-13 09:00 |  |  |  |
| 129 | 3.3 | Revición 3 | milestone, manual | 0d | 2017-05-20 09:00 | 2017-05-20 09:00 |  |  |  | start no earlier than 2017-05-20 09:00 |  |  |  |
| 130 | 3.4 | Revición 4 | milestone, manual | 0d | 2017-05-27 09:00 | 2017-05-27 09:00 |  |  |  | start no earlier than 2017-05-27 09:00 |  |  |  |
| 131 | 3.5 | Revición 5 | milestone, manual | 0d | 2017-06-03 09:00 | 2017-06-03 09:00 |  |  |  | start no earlier than 2017-06-03 09:00 |  |  |  |
| 132 | 3.6 | Revición 6 | milestone, manual | 0d | 2017-06-10 09:00 | 2017-06-10 09:00 |  |  |  | start no earlier than 2017-06-10 09:00 |  |  |  |
| 133 | 3.7 | Revición 7 | milestone, manual | 0d | 2017-06-17 09:00 | 2017-06-17 09:00 |  |  |  | start no earlier than 2017-06-17 09:00 |  |  |  |
| 134 | 3.8 | Revición 8 | milestone, manual | 0d | 2017-06-24 09:00 | 2017-06-24 09:00 |  |  |  | start no earlier than 2017-06-24 09:00 |  |  |  |
| 135 | 3.9 | Revición 9 | milestone, manual | 0d | 2017-07-01 09:00 | 2017-07-01 09:00 |  |  |  | start no earlier than 2017-07-01 09:00 |  |  |  |
| 136 | 3.10 | Revición 10 | milestone, manual | 0d | 2017-07-08 09:00 | 2017-07-08 09:00 |  |  |  | start no earlier than 2017-07-08 09:00 |  |  |  |
| 137 | 3.11 | Revición 11 | milestone, manual | 0d | 2017-07-15 09:00 | 2017-07-15 09:00 |  |  |  | start no earlier than 2017-07-15 09:00 |  |  |  |
| 138 | 3.12 | Revición 12 | milestone, manual | 0d | 2017-07-22 09:00 | 2017-07-22 09:00 |  |  |  | start no earlier than 2017-07-22 09:00 |  |  |  |
| 139 | 3.13 | Revición 13 | milestone, manual | 0d | 2017-07-29 09:00 | 2017-07-29 09:00 |  |  |  | start no earlier than 2017-07-29 09:00 |  |  |  |
| 140 | 3.14 | Revición 14 | milestone, manual | 0d | 2017-08-05 09:00 | 2017-08-05 09:00 |  |  |  | start no earlier than 2017-08-05 09:00 |  |  |  |
